# IDS312.project.starting.file.021318

Schedule from MS Project, 2018-03-12 to 2018-07-24, costs in $.
IDS312

## Calendars

- Standard: Mon-Fri 08:00-12:00, 13:00-17:00; Sat-Sun off. Exceptions (off unless hours are given): 2018-05-28 (Memorial Day), 2018-07-04 (Independence Day).

## Resources

| Resource | Rate | Cost per use |
| --- | --- | --- |
| Web Developer | 25 |  |
| Test Engineer | 20 |  |
| CS Students | 15 |  |
| Firewall |  | 1000 |
| Software License |  | 750 |
| Servers |  | 1500 |
| Project Team | 20 |  |
| Student Volunteers |  |  |

## Schedule

| ID | WBS | Task | Duration | Start | Finish | Predecessors | Total slack | Resources | Work | Cost |
| --- | --- | --- | --- | --- | --- | --- | --- | --- | --- | --- |
| 1 | 1 | **New Student Website** | 95d | 2018-03-12 | 2018-07-24 |  | 0d |  | 1152h | 26,170 |
| 2 | 1.1 | **Project Plan** | 14d | 2018-03-12 | 2018-03-29 |  | 0d |  | 120h | 2,400 |
| 3 | 1.1.1 | **Project Charter** | 4d | 2018-03-12 | 2018-03-15 |  | 0d |  | 32h | 640 |
| 4 | 1.1.1.1 | Write Scope Statement | 2d | 2018-03-12 | 2018-03-13 |  | 0d | Project Team | 16h | 320 |
| 5 | 1.1.1.2 | Create WBS | 2d | 2018-03-14 | 2018-03-15 | 4 | 0d | Project Team | 16h | 320 |
| 6 | 1.1.2 | **Develop Management Plan** | 6d | 2018-03-16 | 2018-03-23 |  | 0d |  | 48h | 960 |
| 7 | 1.1.2.1 | Identify Risk Management Plan | 2d | 2018-03-16 | 2018-03-19 | 5 | 0d | Project Team | 16h | 320 |
| 8 | 1.1.2.2 | Estimate Costs | 2d | 2018-03-20 | 2018-03-21 | 7 | 0d | Project Team | 16h | 320 |
| 9 | 1.1.2.3 | Establish Quality Metrics | 2d | 2018-03-22 | 2018-03-23 | 8 | 0d | Project Team | 16h | 320 |
| 10 | 1.1.3 | Estimate Budget | 2d | 2018-03-26 | 2018-03-27 | 9 | 0d | Project Team | 16h | 320 |
| 11 | 1.1.4 | **Fix Schedule** | 1d | 2018-03-16 | 2018-03-16 |  | 7d |  | 8h | 160 |
| 12 | 1.1.4.1 | Determine Critical Path | 1d | 2018-03-16 | 2018-03-16 | 5 | 7d | Project Team | 8h | 160 |
| 13 | 1.1.5 | Allocate Resources | 2d | 2018-03-28 | 2018-03-29 | 10, 12 | 0d | Project Team | 16h | 320 |
| 14 | 1.2 | **Collect requirements/web design** | 18d | 2018-03-30 | 2018-04-24 |  | 0d |  | 232h | 4,640 |
| 15 | 1.2.1 | **Functional** | 4d | 2018-03-30 | 2018-04-04 |  | 0d |  | 80h | 2,000 |
| 16 | 1.2.1.1 | Determine Administrative Functions | 3d | 2018-03-30 | 2018-04-03 | 13 | 1d | Web Developer | 24h | 600 |
| 17 | 1.2.1.2 | Set Authorization Levels | 3d | 2018-03-30 | 2018-04-03 | 13 | 1d | Web Developer | 24h | 600 |
| 18 | 1.2.1.3 | Establish Authentication | 4d | 2018-03-30 | 2018-04-04 | 13 | 0d | Web Developer | 32h | 800 |
| 19 | 1.2.2 | **Non-Functional** | 4d | 2018-04-05 | 2018-04-10 |  | 0d |  | 72h | 1,200 |
| 20 | 1.2.2.1 | Identify Language Requirements | 2d | 2018-04-05 | 2018-04-06 | 16, 17, 18 | 2d | Web Developer | 16h | 400 |
| 21 | 1.2.2.2 | Data Integrity | 4d | 2018-04-05 | 2018-04-10 | 16, 17, 18 | 0d | Web Developer | 32h | 800 |
| 22 | 1.2.2.3 | Determine Capacity Requirements | 3d | 2018-04-05 | 2018-04-09 | 16, 17, 18 | 1d | Student Volunteers | 24h |  |
| 23 | 1.2.3 | **Technical** | 10d | 2018-04-11 | 2018-04-24 |  | 0d |  | 80h | 1,440 |
| 24 | 1.2.3.1 | Decide Platform | 2d | 2018-04-11 | 2018-04-12 | 20, 21, 22 | 0d | Web Developer | 16h | 400 |
| 25 | 1.2.3.2 | Decide Technology | 2d | 2018-04-13 | 2018-04-16 | 24 | 0d | CS Students | 16h | 240 |
| 26 | 1.2.3.3 | Select Browser | 2d | 2018-04-17 | 2018-04-18 | 25 | 0d | Student Volunteers | 16h |  |
| 27 | 1.2.3.4 | Choose type of Database | 2d | 2018-04-19 | 2018-04-20 | 26 | 0d | Web Developer | 16h | 400 |
| 28 | 1.2.3.5 | Establish Version Control and Reporting | 2d | 2018-04-23 | 2018-04-24 | 27 | 0d | Web Developer | 16h | 400 |

| ID | WBS | Task | Duration | Start | Finish | Predecessors | Total slack | Free slack | Resources | Work | Cost |
| --- | --- | --- | --- | --- | --- | --- | --- | --- | --- | --- | --- |
| 29 | 1.3 | **Determine tech infrastructure and security** | 8d | 2018-03-30 | 2018-04-10 |  | 10d |  |  | 24h | 3,850 |
| 30 | 1.3.1 | **Servers and Network** | 4d | 2018-03-30 | 2018-04-04 |  | 10d |  |  | 24h | 2,100 |
| 31 | 1.3.1.1 | Determine Server Capacity | 4d | 2018-03-30 | 2018-04-04 | 13 | 10d | 0d | Servers |  | 1,500 |
| 32 | 1.3.1.2 | Create Secure Network | 3d | 2018-03-30 | 2018-04-03 | 13 | 11d | 1d | Web Developer | 24h | 600 |
| 33 | 1.3.2 | **Security** | 4d | 2018-04-05 | 2018-04-10 |  | 10d |  |  |  | 1,750 |
| 34 | 1.3.2.1 | Setup Firewall | 4d | 2018-04-05 | 2018-04-10 | 32, 31 | 10d |  | Firewall |  | 1,000 |
| 35 | 1.3.2.2 | Install Firmware | 3d | 2018-04-05 | 2018-04-09 | 32, 31 | 11d |  | Software License |  | 750 |
| 36 | 1.4 | **Plan and Develop Content** | 27d | 2018-04-25 | 2018-06-01 |  | 0d |  |  | 288h | 5,240 |
| 37 | 1.4.1 | **Business Documentation** | 2d | 2018-04-25 | 2018-04-26 |  | 0d |  |  | 16h | 320 |
| 38 | 1.4.1.1 | Draft SLA | 2d | 2018-04-25 | 2018-04-26 | 35, 28, 34 | 0d |  | Project Team | 16h | 320 |
| 39 | 1.4.2 | **User Interface Development** | 25d | 2018-04-27 | 2018-06-01 |  | 0d |  |  | 272h | 4,920 |
| 40 | 1.4.2.1 | **Front End Elements** | 24d | 2018-04-27 | 2018-05-31 |  | 1d |  |  | 168h | 2,800 |
| 41 | 1.4.2.1.1 | Create Images and Content | 5d | 2018-04-27 | 2018-05-03 | 38 | 7d | 0d | Web Developer | 40h | 1,000 |
| 42 | 1.4.2.1.2 | Write HTML Code | 4d | 2018-04-27 | 2018-05-02 | 38 | 8d | 1d | Web Developer; Student Volunteers | 64h | 800 |
| 43 | 1.4.2.1.3 | CSS and JavaScript | 3d | 2018-04-27 | 2018-05-01 | 38 | 9d | 2d | Web Developer; Student Volunteers | 48h | 600 |
| 44 | 1.4.2.1.4 | **Site Navigation** | 2d | 2018-05-30 | 2018-05-31 |  | 1d |  |  | 16h | 400 |
| 45 | 1.4.2.1.4.1 | Design Layout | 2d | 2018-05-30 | 2018-05-31 | 50 | 1d |  | Web Developer | 16h | 400 |
| 46 | 1.4.2.2 | **Back End Elements** | 17d | 2018-05-04 | 2018-05-29 |  | 0d |  |  | 104h | 2,120 |
| 47 | 1.4.2.2.1 | Generate SQL Queries | 3d | 2018-05-04 | 2018-05-08 | 41, 42, 43 | 7d |  | CS Students; Web Developer | 48h | 960 |
| 48 | 1.4.2.2.2 | **Integrate Database with Website** | 7d | 2018-05-18 | 2018-05-29 |  | 0d |  |  | 56h | 1,160 |
| 49 | 1.4.2.2.2.1 | Interface development | 4d | 2018-05-18 | 2018-05-23 | 56, 47 | 0d |  | Web Developer | 32h | 800 |
| 50 | 1.4.2.2.2.2 | Load Database content into website | 3d | 2018-05-24 | 2018-05-29 | 49 | 0d |  | CS Students | 24h | 360 |
| 51 | 1.4.2.3 | Integrate User Email | 3d | 2018-05-30 | 2018-06-01 | 50 | 0d |  |  |  |  |
| 52 | 1.5 | **Configure Database** | 15d | 2018-04-27 | 2018-05-17 |  | 0d |  |  | 144h | 2,680 |
| 53 | 1.5.1 | Compile user credentials | 4d | 2018-04-27 | 2018-05-02 | 38 | 0d |  | CS Students | 32h | 480 |
| 54 | 1.5.2 | Determine components and entries | 3d | 2018-05-03 | 2018-05-07 | 53 | 0d |  | Web Developer; Student Volunteers | 48h | 600 |
| 55 | 1.5.3 | Create Tables with user data | 5d | 2018-05-08 | 2018-05-14 | 54 | 0d |  | Web Developer | 40h | 1,000 |
| 56 | 1.5.4 | Create procedure to update data | 3d | 2018-05-15 | 2018-05-17 | 55 | 0d |  | Web Developer | 24h | 600 |

| ID | WBS | Task | Duration | Start | Finish | Predecessors | Total slack | Resources | Work | Cost |
| --- | --- | --- | --- | --- | --- | --- | --- | --- | --- | --- |
| 57 | 1.6 | **Testing** | 22d | 2018-06-04 | 2018-07-03 |  | 0d |  | 176h | 3,520 |
| 58 | 1.6.1 | **Create testing plan and criteria** | 1d | 2018-06-04 | 2018-06-04 |  | 0d |  | 8h | 160 |
| 59 | 1.6.1.1 | Write Test Documents | 1d | 2018-06-04 | 2018-06-04 | 51, 45 | 0d | Test Engineer | 8h | 160 |
| 60 | 1.6.2 | **Assign test team** | 1d | 2018-06-05 | 2018-06-05 |  | 0d |  | 8h | 160 |
| 61 | 1.6.2.1 | Select test engineers | 1d | 2018-06-05 | 2018-06-05 | 58 | 0d | Project Team | 8h | 160 |
| 62 | 1.6.3 | **Develop test cases** | 20d | 2018-06-06 | 2018-07-03 |  | 0d |  | 160h | 3,200 |
| 63 | 1.6.3.1 | Conduct Unit Testing | 3d | 2018-06-06 | 2018-06-08 | 61 | 0d | Test Engineer | 24h | 480 |
| 64 | 1.6.3.2 | Conduct User Acceptance Testing | 5d | 2018-06-11 | 2018-06-15 | 63 | 0d | Test Engineer | 40h | 800 |
| 65 | 1.6.3.3 | Assess Regression Analysis | 5d | 2018-06-18 | 2018-06-22 | 64 | 0d | Test Engineer | 40h | 800 |
| 66 | 1.6.3.4 | Test Client/Server compatability | 4d | 2018-06-25 | 2018-06-28 | 65 | 0d | Test Engineer | 32h | 640 |
| 67 | 1.6.3.5 | Conduct Integration Testing | 3d | 2018-06-29 | 2018-07-03 | 66 | 0d | Test Engineer | 24h | 480 |
| 68 | 1.7 | **Implementation** | 14d | 2018-07-05 | 2018-07-24 |  | 0d |  | 168h | 3,840 |
| 69 | 1.7.1 | Present Demo for Customer (UIC) | 1d | 2018-07-05 | 2018-07-05 | 67 | 0d | Project Team; Web Developer | 16h | 360 |
| 70 | 1.7.2 | Collect Feedback | 1d | 2018-07-06 | 2018-07-06 | 69 | 0d | Project Team | 8h | 160 |
| 71 | 1.7.3 | Launch Interal Pilot to Faculty/Staff | 5d | 2018-07-09 | 2018-07-13 | 70 | 0d | Project Team; Web Developer | 80h | 1,800 |
| 72 | 1.7.4 | Send System wide announcement | 1d | 2018-07-16 | 2018-07-16 | 71 | 0d | Project Team | 8h | 160 |
| 73 | 1.7.5 | Make Enhancements/Bug fixes | 5d | 2018-07-17 | 2018-07-23 | 72 | 0d | Web Developer | 40h | 1,000 |
| 74 | 1.7.6 | Deliver Documentation | 1d | 2018-07-24 | 2018-07-24 | 73 | 0d | Project Team | 8h | 160 |
| 75 | 1.7.7 | Site Launch | 1d | 2018-07-24 | 2018-07-24 | 73 | 0d | Web Developer | 8h | 200 |
